# UCCC Mater Plan

Schedule from MS Project, 2026-06-07 to 2035-12-31.
UCCC Master Plan
Remat Advanced

## Calendars

- UCCC KSA Calendar: Mon-Thu 08:00-18:00; Fri-Sat off; Sun 08:00-18:00. Exceptions (off unless hours are given): 2026-08-30 08:00-12:00, 13:00-17:00, 2035-09-30 08:00-12:00, 13:00-17:00.

## Schedule

| ID | WBS | Task | Type | Duration | Start | Finish | Predecessors | Total slack | Free slack | Constraint |
| --- | --- | --- | --- | --- | --- | --- | --- | --- | --- | --- |
| 1 | 1 | **UCCC Program Master Plan - Track Wise** |  | 3120.5d? | 2026-06-07 | 2035-12-31 |  | 0d |  |  |
| 2 | 1.1 | **Consultancy Track** |  | 837.25d | 2026-06-07 | 2028-12-31 |  | 0d |  |  |
| 3 | 1.1.1 | **O : Mobilization and Pre-Kickoff** |  | 25d | 2026-06-07 | 2026-07-05 |  |  |  |  |
| 4 | 1.1.1.1 | Change Management and Communication Plan |  | 24d | 2026-06-07 | 2026-07-02 |  | 3095.75d |  | finish no earlier than 2026-07-02 |
| 5 | 1.1.1.2 | Project Governance |  | 24d | 2026-06-07 | 2026-07-02 |  | 3096.5d |  | start no earlier than 2026-06-07 |
| 6 | 1.1.1.3 | Team Mobilization |  | 24d | 2026-06-07 | 2026-07-02 |  | 3055.5d | 0d | start no earlier than 2026-06-07 |
| 7 | 1.1.2 | **1. Discover and Assess** |  | 41d | 2026-07-02 | 2026-08-18 |  | 3055.5d |  |  |
| 8 | 1.1.2.1 | **1.1 Discovery and Baseline Understanding** |  | 41d | 2026-07-02 | 2026-08-18 |  | 3055.5d |  |  |
| 9 | 1.1.2.1.1 | 1.1.1 Baseline |  | 35d | 2026-07-02 | 2026-08-11 | 6 | 3061.5d |  |  |
| 10 | 1.1.2.1.2 | 1.1.2 Benchmarking |  | 35d | 2026-07-02 | 2026-08-11 | 6 | 3055.5d | 0d |  |
| 11 | 1.1.2.1.3 | 1.1.3 Gap Analysis | milestone | 5d | 2026-08-12 | 2026-08-18 | 10FS+1d | 3055.5d |  |  |
| 12 | 1.1.3 | **2. Envision and Strategise** |  | 148.5d | 2026-08-02 | 2027-01-14 |  | 55.5d |  |  |
| 13 | 1.1.3.1 | **2.1 Vision Definition** |  | 67.5d | 2026-08-02 | 2026-10-15 |  | 3003d |  |  |
| 14 | 1.1.3.1.1 | 2.1.1 UCCC Vision and Objectives |  | 25d | 2026-08-02 | 2026-08-30 |  | 3045.5d |  | start no earlier than 2026-08-02 |
| 15 | 1.1.3.1.2 | 2.1.2 UCCC Ecosystem Definition |  | 55d | 2026-08-16 | 2026-10-15 |  | 3003d |  | start no earlier than 2026-08-16 |
| 16 | 1.1.3.2 | **2.2 Blueprint Setup** |  | 136d | 2026-08-16 | 2027-01-14 |  | 43d |  |  |
| 17 | 1.1.3.2.1 | **2.2.1 Target Operating Model** |  | 136d | 2026-08-16 | 2027-01-14 |  | 43d |  |  |
| 18 | 1.1.3.2.1.1 | Level 1 Design of TOM |  | 50d | 2026-08-16 | 2026-10-11 |  | 43d | 0d | start no earlier than 2026-08-16 |
| 19 | 1.1.3.2.1.2 | Level 2 Design of TOM | milestone | 85d | 2026-10-12 | 2027-01-14 | 18FS+1d | 43d | 0d |  |
| 20 | 1.1.3.2.2 | **2.2.2 Tech Blueprint** |  | 136d | 2026-08-16 | 2027-01-14 |  | 2922d |  |  |
| 21 | 1.1.3.2.2.1 | Level 1 Tech Blueprint |  | 50d | 2026-08-16 | 2026-10-11 |  | 2922d | 0d | start no earlier than 2026-08-16 |
| 22 | 1.1.3.2.2.2 | Level 2 Tech Blueprint | milestone | 85d | 2026-10-12 | 2027-01-14 | 21FS+1d | 2922d |  |  |
| 23 | 1.1.3.2.3 | 2.2.3 Facility Blueprint |  | 56d | 2026-09-20 | 2026-11-19 |  | 2971d |  | start no earlier than 2026-09-20 |
| 24 | 1.1.3.2.4 | 2.2.4 User Blueprint |  | 25d | 2026-09-20 | 2026-10-18 |  | 3002d |  | start no earlier than 2026-09-20 |

| ID | WBS | Task | Type | Duration | Start | Finish | Predecessors | Total slack | Free slack | Constraint |
| --- | --- | --- | --- | --- | --- | --- | --- | --- | --- | --- |
| 25 | 1.1.3.3 | **2.3 Value Creation** |  | 55d | 2026-11-01 | 2026-12-31 |  | 2934.5d |  |  |
| 26 | 1.1.3.3.1 | 2.3.1 Data Value Creation |  | 55d | 2026-11-01 | 2026-12-31 |  | 2934.5d |  | start no earlier than 2026-11-01 |
| 27 | 1.1.4 | **3. Execution Detailing** |  | 248.5d | 2026-07-12 | 2027-04-15 |  | 2840.75d |  |  |
| 28 | 1.1.4.1 | **3.1 Execution and Change Enablement** |  | 155.25d | 2026-07-12 | 2026-12-31 |  | 2934d |  |  |
| 29 | 1.1.4.1.1 | **3.1.1 Execution Planning and Change Management** |  | 30d | 2026-07-12 | 2026-08-13 |  | 3059.25d |  |  |
| 30 | 1.1.4.1.1.1 | Integrated master plan definition | milestone | 30d | 2026-07-12 | 2026-08-13 |  | 3059.25d |  | start no earlier than 2026-07-12 |
| 31 | 1.1.4.1.2 | 3.1.2 RFP Factory |  | 124d | 2026-08-16 | 2026-12-31 |  | 2934d |  | start no earlier than 2026-08-16 |
| 32 | 1.1.4.2 | **3.2 Operation Detailing** |  | 80d | 2027-01-17 | 2027-04-15 |  | 2840.75d |  |  |
| 33 | 1.1.4.2.1 | 3.2.1 ConOps and SOPs Development |  | 80d | 2027-01-17 | 2027-04-15 |  | 2840.75d |  | start no earlier than 2027-01-17 |
| 34 | 1.1.4.2.2 | 3.2.2 SLA and KPI Definition |  | 80d | 2027-01-17 | 2027-04-15 |  | 2840.75d |  | start no earlier than 2027-01-17 |
| 35 | 1.1.5 | **4. Manage Transformations and Assure Value** |  | 650d | 2027-01-03 | 2028-12-31 |  | 2283.25d |  |  |
| 36 | 1.1.5.1 | **4.1 Implementation Governance and Success Assurance** |  | 650d | 2027-01-03 | 2028-12-31 |  | 2283.25d |  |  |
| 37 | 1.1.5.1.1 | 4.1.1 Oversee Implementation |  | 650d | 2027-01-03 | 2028-12-31 |  | 2283.25d |  | start no earlier than 2027-01-03 |
| 38 | 1.1.5.1.2 | 4.1.2 TOM Assurance and Enhancement |  | 650d | 2027-01-03 | 2028-12-31 |  | 2283.25d |  | start no earlier than 2027-01-03 |
| 39 | 2 | **Technology Track** |  | 3058d | 2026-08-16 | 2035-12-31 |  | 0d |  |  |
| 40 | 2.1 | **TT 1: Pre-RFP Activities** |  | 29d | 2026-08-16 | 2026-09-16 |  | 2835d |  |  |
| 41 | 1.2.1.1 | Strategise for Interim CCC and UCCC packgaing |  | 2d | 2026-08-16 | 2026-08-17 |  | 2821d | 0d | start no earlier than 2026-08-16 |
| 42 | 1.2.1.2 | Align with RA on the packgaing for Interim CCC and UCCC |  | 1d | 2026-08-17 | 2026-08-18 | 41 | 2821d | 0d |  |
| 43 | 1.2.1.3 | Prepare approach for hosting of UCCC (On-Premise or Cloud) |  | 4d | 2026-08-18 | 2026-08-23 | 42 | 2821d | 0d |  |
| 44 | 1.2.1.4 | Align with RA on the hosting strategy |  | 1d | 2026-08-23 | 2026-08-24 | 43 | 2821d | 0d |  |
| 45 | 1.2.1.5 | Define the To-Be state for UCCC |  | 20d | 2026-08-24 | 2026-09-15 | 44 | 2821d | 0d | start no earlier than 2026-08-09 |
| 46 | 1.2.1.6 | Align on the To-Be state for inputs to RFP |  | 1d | 2026-09-15 | 2026-09-16 | 45 | 2821d | 0d |  |
| 47 | 2.2 | **TT 2: Preparation of Technology RFP** |  | 51d | 2026-08-16 | 2026-10-12 |  | 2864d |  |  |
| 48 | 2.2.1 | **Prepare Volume 1 of Technology RFP** |  | 5d | 2026-08-16 | 2026-08-20 |  | 2865d |  |  |
| 49 | 1.2.2.1.1 | Perform necessary updates for volume 1 of RFP |  | 2d | 2026-08-16 | 2026-08-17 |  | 2851d | 0d | start no earlier than 2026-08-16 |
| 50 | 1.2.2.1.2 | Perform internal reviews for Volume 1 |  | 2d | 2026-08-17 | 2026-08-19 | 49 | 2851d | 0d |  |
| 51 | 1.2.2.1.3 | Update as per internal feedback |  | 1d | 2026-08-19 | 2026-08-20 | 50 | 2851d | 0d |  |

| ID | WBS | Task | Type | Duration | Start | Finish | Predecessors | Total slack | Free slack | Constraint |
| --- | --- | --- | --- | --- | --- | --- | --- | --- | --- | --- |
| 52 | 2.2.2 | **Prepare Volume 2 of Technology RFP** |  | 28.5d | 2026-08-30 | 2026-09-30 |  | 2851.5d |  |  |
| 53 | 1.2.2.2.1 | Prepare Scope of Work for Technology RFP |  | 5d | 2026-08-30 | 2026-09-03 |  | 3040.5d |  | start no earlier than 2026-08-30 |
| 54 | 1.2.2.2.2 | Prepare detailed functional and technical specifications of RFP |  | 8d | 2026-09-16 | 2026-09-24 | 46 | 2835d | 0d |  |
| 55 | 1.2.2.2.3 | Prepare the remaining sections of volume 2 |  | 2d | 2026-09-24 | 2026-09-28 | 54 | 2835d | 0d |  |
| 56 | 1.2.2.2.4 | Internal reviews for Volume 2 fo RFP |  | 1d | 2026-09-28 | 2026-09-29 | 55 | 2835d | 0d |  |
| 57 | 1.2.2.2.5 | Incorporate the internal feedback comments |  | 1d | 2026-09-29 | 2026-09-30 | 56 | 2835d | 0d |  |
| 58 | 1.2.2.3 | **Prepare Volume 3 of Technology RFP** |  | 6d | 2026-09-13 | 2026-09-17 |  | 2845.25d |  |  |
| 59 | 1.2.2.3.1 | Prepare the evaluation criteria for technology vendor |  | 3d | 2026-09-13 | 2026-09-15 | 51 | 2831.25d | 0d | start no earlier than 2026-09-13 |
| 60 | 1.2.2.3.2 | Internal review and feedback on the criteria |  | 1d | 2026-09-15 | 2026-09-16 | 59 | 2831.25d | 0d |  |
| 61 | 1.2.2.3.3 | Incorporate the internal feedback |  | 2d | 2026-09-16 | 2026-09-17 | 60 | 2831.25d | 10.25d |  |
| 62 | 1.2.2.4 | **Prepare Volume 4 of Technology RFP** |  | 4d | 2026-08-20 | 2026-08-25 |  | 2867d |  |  |
| 63 | 1.2.2.4.1 | Prepare the required formats for bid submission by the bidders |  | 2d | 2026-08-20 | 2026-08-23 | 51 | 2853d | 0d |  |
| 64 | 1.2.2.4.2 | Internal review and feedback on the formats |  | 1d | 2026-08-23 | 2026-08-24 | 63 | 2853d | 0d |  |
| 65 | 1.2.2.4.3 | Incorporate the feedback |  | 1d | 2026-08-24 | 2026-08-25 | 64 | 2853d | 32d |  |
| 66 | 1.2.2.5 | **Review and Approval by RA** |  | 10d | 2026-09-30 | 2026-10-12 |  | 2835d |  |  |
| 67 | 1.2.2.5.1 | Submission of consolidated RFP by PwC | milestone | 1d | 2026-09-30 | 2026-09-30 | 51, 57, 61, 65 | 2821d | 0d |  |
| 68 | 1.2.2.5.2 | Review by RA |  | 5d | 2026-09-30 | 2026-10-06 | 67 | 2821d | 0d |  |
| 69 | 1.2.2.5.3 | Incorporate the feedback provided by RA |  | 3d | 2026-10-06 | 2026-10-11 | 68 | 2821d | 0d |  |
| 70 | 1.2.2.5.4 | Approval by RA for publishing |  | 1d | 2026-10-11 | 2026-10-12 | 69 | 2821d | 0d |  |
| 71 | 1.2.3 | **TT 3: Publishing and Bid Management of Technology RFP** |  | 82d | 2026-10-12 | 2027-01-11 |  | 2835d |  |  |
| 72 | 1.2.3.1 | **Bid Submission** |  | 34d | 2026-10-12 | 2026-11-18 |  | 2835d |  |  |
| 73 | 1.2.3.1.1 | Publish the Technology RFP |  | 1d | 2026-10-12 | 2026-10-12 | 70 | 2835d | 0d |  |
| 74 | 1.2.3.1.2 | Conduct tender clarification workshop with bidders |  | 1d | 2026-10-18 | 2026-10-19 | 73FS+5d | 2835d | 0d |  |
| 75 | 1.2.3.1.3 | Receive the queries from potential bidders |  | 5d | 2026-10-19 | 2026-10-25 | 74 | 2835d | 0d |  |
| 76 | 1.2.3.1.4 | Prepare the responses to the clarifications sought |  | 8d | 2026-10-25 | 2026-11-03 | 75 | 2835d | 0d |  |
| 77 | 1.2.3.1.5 | Review of the responses by RA |  | 2d | 2026-11-03 | 2026-11-04 | 76 | 2835d | 0d |  |
| 78 | 1.2.3.1.6 | Prepare and publish the addendum, if necessary |  | 2d | 2026-11-04 | 2026-11-08 | 77 | 2835d | 0d |  |
| 79 | 1.2.3.1.7 | Submission of the bids by the vendors |  | 10d | 2026-11-08 | 2026-11-18 | 78 | 2835d | 0d |  |

| ID | WBS | Task | Type | Duration | Start | Finish | Predecessors | Total slack | Free slack |
| --- | --- | --- | --- | --- | --- | --- | --- | --- | --- |
| 80 | 1.2.3.2 | **Bid Evaluation for Technology RFP** |  | 25d | 2026-11-18 | 2026-12-16 |  | 2835d |  |
| 81 | 1.2.3.2.1 | **Technical Evaluation** |  | 17d | 2026-11-18 | 2026-12-07 |  | 2835d |  |
| 82 | 1.2.3.2.1.1 | Perform technical evaluation of the qualified bids |  | 10d | 2026-11-18 | 2026-11-30 | 79 | 2835d | 0d |
| 83 | 1.2.3.2.1.2 | Prepare the technical evaluation report |  | 2d | 2026-11-30 | 2026-12-01 | 82 | 2835d | 0d |
| 84 | 1.2.3.2.1.3 | Review of technical evaluation report with RA |  | 2d | 2026-12-01 | 2026-12-03 | 83 | 2835d | 0d |
| 85 | 1.2.3.2.1.4 | Incorporate the suggested changes by RA |  | 2d | 2026-12-03 | 2026-12-07 | 84 | 2835d | 0d |
| 86 | 1.2.3.2.1.5 | Approval of technical evaluation by RA and opening of commercial bids |  | 1d | 2026-12-07 | 2026-12-07 | 85 | 2835d | 0d |
| 87 | 1.2.3.2.2 | **Commercial Evaluation** |  | 8d | 2026-12-07 | 2026-12-16 |  | 2835d |  |
| 88 | 1.2.3.2.2.1 | Perform commercial evaluation of the qualified bids |  | 3d | 2026-12-07 | 2026-12-10 | 86 | 2835d | 0d |
| 89 | 1.2.3.2.2.2 | Prepare the commercial evaluation report |  | 1d | 2026-12-10 | 2026-12-13 | 88 | 2835d | 0d |
| 90 | 1.2.3.2.2.3 | Review of commercial evaluation report with RA |  | 2d | 2026-12-13 | 2026-12-14 | 89 | 2835d | 0d |
| 91 | 1.2.3.2.2.4 | Incorporate the suggested changes by RA |  | 1d | 2026-12-14 | 2026-12-15 | 90 | 2835d | 0d |
| 92 | 1.2.3.2.2.5 | Approval of commercial evaluation by RA |  | 1d | 2026-12-15 | 2026-12-16 | 91 | 2835d | 0d |
| 93 | 1.2.3.3 | **Vendor On-boarding** |  | 23d | 2026-12-16 | 2027-01-11 |  | 2835d |  |
| 94 | 1.2.3.3.1 | Perform negotiation with the qualified bidder |  | 3d | 2026-12-16 | 2026-12-20 | 92 | 2835d | 0d |
| 95 | 1.2.3.3.2 | Sign the contract with selected vendor | milestone | 10d | 2026-12-20 | 2026-12-30 | 94 | 2835d | 0d |
| 96 | 1.2.3.3.3 | Mobilization of Resources |  | 10d | 2026-12-30 | 2027-01-11 | 95 | 2925d |  |
| 97 | 1.2.4 | **TT 4: Implementation of UCCC Technology Landscape** |  | 2935d | 2026-12-30 | 2035-12-31 |  | 0d |  |
| 98 | 1.2.4.1 | **Initiation Phase** |  | 14d | 2026-12-30 | 2027-01-14 |  | 2835d |  |
| 99 | 1.2.4.1.1 | Preparation for project kick-off |  | 5d | 2026-12-30 | 2027-01-05 | 95 | 2835d | 0d |
| 100 | 1.2.4.1.2 | Kick-off presentation with key stakeholders |  | 1d | 2027-01-05 | 2027-01-06 | 99 | 2835d | 0d |
| 101 | 1.2.4.1.3 | Preparation of the detailed project plan for implementation |  | 5d | 2027-01-06 | 2027-01-12 | 100 | 2835d | 0d |
| 102 | 1.2.4.1.4 | Review and approval of the detailed project plan by RA |  | 3d | 2027-01-12 | 2027-01-14 | 101 | 2835d | 0d |
| 103 | 1.2.4.2 | **Assess Phase** |  | 28d | 2027-01-14 | 2027-02-16 |  | 2835d |  |
| 104 | 1.2.4.2.1 | Validate the platforms and data sources required for integration with UCCC |  | 15d | 2027-01-14 | 2027-02-01 | 102 | 2835d | 0d |
| 105 | 1.2.4.2.2 | Prepare or update the AS-IS assessment document |  | 10d | 2027-02-01 | 2027-02-11 | 104 | 2835d | 0d |
| 106 | 1.2.4.2.3 | Review and approval by RA | milestone | 3d | 2027-02-11 | 2027-02-16 | 105 | 2835d | 0d |

| ID | WBS | Task | Type | Duration | Start | Finish | Predecessors | Total slack | Free slack | Constraint |
| --- | --- | --- | --- | --- | --- | --- | --- | --- | --- | --- |
| 107 | 1.2.4.3 | **Design Phase** |  | 33d | 2027-02-16 | 2027-03-24 |  | 2835d |  |  |
| 108 | 1.2.4.3.1 | Develop the detailed Architecture for UCCC Technology landscape including applications, Data models, hosting, integration, security etc. |  | 20d | 2027-02-16 | 2027-03-10 | 106 | 2835d | 0d |  |
| 109 | 1.2.4.3.2 | Review and approval of the To-Be design document by RA | milestone | 5d | 2027-03-10 | 2027-03-16 | 108 | 2835d | 0d |  |
| 110 | 1.2.4.3.3 | Prepare the final BOQ for procurement |  | 3d | 2027-03-16 | 2027-03-18 | 109 | 2835d | 0d |  |
| 111 | 1.2.4.3.4 | Review and approval of the BOQ by RA | milestone | 5d | 2027-03-18 | 2027-03-24 | 110 | 2835d | 0d |  |
| 112 | 1.2.4.4 | **Source HW & SW Phase** |  | 25d | 2027-03-24 | 2027-04-21 |  | 2835d |  |  |
| 113 | 1.2.4.4.1 | Procure the necessary hardware and software for priority deployment such as video wall, CCC software licenses, hosting infrastructure etc. |  | 10d | 2027-03-24 | 2027-04-05 | 111 | 2845d | 0d |  |
| 114 | 1.2.4.4.2 | Inspect the hardware and software against the proposed tech stack and the models |  | 5d | 2027-04-05 | 2027-04-11 | 113 | 2845d |  |  |
| 115 | 1.2.4.4.3 | Procure the remaining harware and software |  | 20d | 2027-03-24 | 2027-04-15 | 111 | 2835d | 0d |  |
| 116 | 1.2.4.4.4 | Inspect the hardware and software against the proposed tech stack and the models |  | 5d | 2027-04-15 | 2027-04-21 | 115 | 2835d |  |  |
| 117 | 1.2.4.5 | **Development, Testing and Go-Live Phase** |  | 501d | 2027-05-31 | 2028-12-11 |  | 7.75d |  |  |
| 118 | 1.2.4.5.1 | **Hosting Readiness** |  | 26d | 2027-05-31 | 2027-06-28 |  | 7.75d |  |  |
| 119 | 1.2.4.5.1.1 | Confirm the physical DC or cloud readiness for hosting |  | 1d | 2027-05-31 | 2027-05-31 | 258 | 7.75d | 0d | start no earlier than 2027-05-31 |
| 120 | 1.2.4.5.1.2 | Establish connectivity to the hosting site |  | 5d | 2027-05-31 | 2027-06-06 | 119 | 7.75d | 0d |  |
| 121 | 1.2.4.5.1.3 | Create the development, testing and production environments |  | 10d | 2027-06-06 | 2027-06-16 | 120 | 7.75d | 0d |  |
| 122 | 1.2.4.5.1.4 | Install and configure the hosting infrastructure including servers, storage, security components etc. |  | 10d | 2027-06-16 | 2027-06-28 | 121 | 7.75d | 0d |  |
| 123 | 1.2.4.5.2 | **Implementation of UCCC platform** |  | 475d | 2027-06-28 | 2028-12-11 |  | 7.75d |  |  |
| 124 | 1.2.4.5.2.1 | **Wave 1 Implementation** |  | 153d | 2027-06-28 | 2027-12-16 |  | 7.75d |  |  |
| 125 | 1.2.4.5.2.1.1 | Installation and configuration of the core CCC software |  | 3d | 2027-06-28 | 2027-07-01 | 122 | 7.75d | 0d |  |
| 126 | 1.2.4.5.2.1.2 | Development of integration interfaces for the 10 centres |  | 20d | 2027-07-01 | 2027-07-25 | 125 | 7.75d | 0d |  |
| 127 | 1.2.4.5.2.1.3 | Integration of the applications and data sources |  | 10d | 2027-07-25 | 2027-08-04 | 126 | 7.75d | 0d |  |
| 128 | 1.2.4.5.2.1.4 | Perform data migration, develop the use cases and necessary dashboards |  | 10d | 2027-08-04 | 2027-08-16 | 127 | 7.75d | 0d |  |
| 129 | 1.2.4.5.2.1.5 | Configure for the necessary workflows for each usecase |  | 5d | 2027-08-16 | 2027-08-22 | 128 | 7.75d | 0d |  |
| 130 | 1.2.4.5.2.1.6 | Configure the operator workstations |  | 5d | 2027-08-22 | 2027-08-26 | 129 | 7.75d | 0d |  |
| 131 | 1.2.4.5.2.1.7 | Prepare a test plan for Wave 1 |  | 4d | 2027-08-26 | 2027-08-31 | 130 | 7.75d | 0d |  |
| 132 | 1.2.4.5.2.1.8 | Perform UAT and bug fixes |  | 10d | 2027-08-31 | 2027-09-12 | 131 | 7.75d | 0d |  |
| 133 | 1.2.4.5.2.1.9 | Train the operators |  | 10d | 2027-09-12 | 2027-09-22 | 132, 173 | 7.75d | 0d |  |
| 134 | 1.2.4.5.2.1.10 | Go-Live of Wave 1 | milestone | 1d | 2027-09-22 | 2027-09-23 | 133 | 7.75d | 0d |  |
| 135 | 1.2.4.5.2.1.11 | Hypercare period for Wave 1 |  | 75d | 2027-09-23 | 2027-12-16 | 134 | 7.75d | 0d |  |

| ID | WBS | Task | Type | Duration | Start | Finish | Predecessors | Total slack | Free slack | Constraint |
| --- | --- | --- | --- | --- | --- | --- | --- | --- | --- | --- |
| 136 | 1.2.4.5.2.2 | **Wave 2 Implementation** |  | 161d | 2027-12-16 | 2028-06-14 |  | 7.75d |  |  |
| 137 | 1.2.4.5.2.2.1 | Identify and finalize the cross-domain usecases to be implemented |  | 15d | 2027-12-16 | 2028-01-03 | 135 | 7.75d | 0d |  |
| 138 | 1.2.4.5.2.2.2 | Develop the usecases |  | 30d | 2028-01-03 | 2028-02-06 | 137 | 7.75d | 0d |  |
| 139 | 1.2.4.5.2.2.3 | Configure the workflows |  | 10d | 2028-02-06 | 2028-02-16 | 138 | 7.75d | 0d |  |
| 140 | 1.2.4.5.2.2.4 | Develop dashboards for identified usecases |  | 10d | 2028-02-16 | 2028-02-28 | 139 | 7.75d | 0d |  |
| 141 | 1.2.4.5.2.2.5 | Perform UAT and bug fixes |  | 15d | 2028-02-28 | 2028-03-15 | 140 | 7.75d | 0d |  |
| 142 | 1.2.4.5.2.2.6 | Train the operators |  | 5d | 2028-03-15 | 2028-03-21 | 141 | 7.75d | 0d |  |
| 143 | 1.2.4.5.2.2.7 | Go-Live for Wave 2 | milestone | 1d | 2028-03-21 | 2028-03-22 | 142 | 7.75d | 0d | start no earlier than 2027-03-31 |
| 144 | 1.2.4.5.2.2.8 | Hypercare period for Wave 2 |  | 75d | 2028-03-22 | 2028-06-14 | 143 | 7.75d | 0d |  |
| 145 | 1.2.4.5.2.3 | **Wave 3 Implementation** |  | 161d | 2028-06-14 | 2028-12-11 |  | 7.75d |  |  |
| 146 | 1.2.4.5.2.3.1 | Finalize full capabilities to be implemented |  | 10d | 2028-06-14 | 2028-06-26 | 144 | 7.75d | 0d |  |
| 147 | 1.2.4.5.2.3.2 | Implement advanced AI use cases, workflows and scenario simulation modelling |  | 30d | 2028-06-26 | 2028-07-30 | 146 | 7.75d | 0d |  |
| 148 | 1.2.4.5.2.3.3 | Training and fine-tuning of the advanced AI and simulation models |  | 20d | 2028-07-30 | 2028-08-21 | 147 | 7.75d | 0d |  |
| 149 | 1.2.4.5.2.3.4 | Perform UAT and bug fixes |  | 15d | 2028-08-21 | 2028-09-06 | 148 | 7.75d | 0d |  |
| 150 | 1.2.4.5.2.3.5 | Train the operators |  | 10d | 2028-09-06 | 2028-09-18 | 149 | 7.75d | 0d |  |
| 151 | 1.2.4.5.2.3.6 | Go-live of Wave 3 | milestone | 1d | 2028-09-18 | 2028-09-18 | 150 | 7.75d | 0d |  |
| 152 | 1.2.4.5.2.3.7 | Hypercare period for Wave 3 |  | 75d | 2028-09-18 | 2028-12-11 | 151 | 7.75d | 0d |  |
| 153 | 1.2.4.6 | **Support and Maintenance Phase** |  | 2299.75d | 2028-12-11 | 2035-12-31 |  | 0d |  |  |
| 154 | 1.2.4.6.1 | Finalize the support and maintenance phase activities |  | 10d | 2028-12-11 | 2028-12-21 | 152 | 7.75d |  |  |
| 155 | 1.2.4.6.2 | Support and maintenance for UCCC technology landscape along with new usecase implementations |  | 2282d | 2029-01-01 | 2035-12-31 | 154 | 0d |  | start no earlier than 2029-01-01 |
| 156 | 1.2.4.6.3 | HOTO at the end of support and maintenance phase |  | 45d | 2035-10-24 | 2035-12-13 | 155FS-60d | 15d |  |  |
| 157 | 3 | **Operations Track** |  | 2921.75d | 2027-01-14 | 2035-12-31 |  | 0.25d |  |  |
| 158 | 3.1 | **OT 1: Organisation Structure Definition** |  | 31d | 2027-01-14 | 2027-02-17 |  | 43d |  |  |
| 159 | 1.3.1.1 | Finalization of TOM with detailed roles and responsibilities |  | 1d | 2027-01-14 | 2027-01-14 | 19 | 43d | 0d |  |
| 160 | 1.3.1.2 | Approval to initiate the hiring process and allocation of budget | milestone | 30d | 2027-01-14 | 2027-02-17 | 159 | 43d | 0d |  |

| ID | WBS | Task | Duration | Start | Finish | Predecessors | Total slack | Free slack | Constraint |
| --- | --- | --- | --- | --- | --- | --- | --- | --- | --- |
| 161 | 1.3.2 | **OT 2: Sourcing and Selection of UCCC Operators** | 58d | 2027-02-17 | 2027-04-25 |  | 43d |  |  |
| 162 | 1.3.2.1 | **Sourcing and Shortlisting Phase** | 33d | 2027-02-17 | 2027-03-28 |  | 43d |  |  |
| 163 | 1.3.2.1.1 | Publish the job posts in various platforms | 5d | 2027-02-17 | 2027-02-23 | 160 | 43d | 0d |  |
| 164 | 1.3.2.1.2 | Source the CVs of the potential operators | 20d | 2027-02-23 | 2027-03-17 | 163 | 43d | 0d |  |
| 165 | 1.3.2.1.3 | Conduct preliminary screening of the CVs | 5d | 2027-03-17 | 2027-03-23 | 164 | 43d | 0d |  |
| 166 | 1.3.2.1.4 | Finalize the shortlisted candidates for interviews | 3d | 2027-03-23 | 2027-03-28 | 165 | 43d | 0d |  |
| 167 | 1.3.2.2 | **Selection Phase** | 25d | 2027-03-28 | 2027-04-25 |  | 43d |  |  |
| 168 | 1.3.2.2.1 | Conduct round 1 of interviews for shortlisted candidates | 10d | 2027-03-28 | 2027-04-07 | 166 | 43d | 0d |  |
| 169 | 1.3.2.2.2 | Conduct round 2 of interviews for shortlisted candidates | 10d | 2027-04-07 | 2027-04-19 | 168 | 43d | 0d |  |
| 170 | 1.3.2.2.3 | Select the candidates for on-boarding | 5d | 2027-04-19 | 2027-04-25 | 169 | 43d | 0d |  |
| 171 | 1.3.3 | **OT 3: On-boarding, Training and Deployment Phase** | 2832.75d | 2027-04-25 | 2035-12-31 |  | 0.25d |  |  |
| 172 | 1.3.3.1 | Perform preparatory activities for on-boarding of the operators | 80d | 2027-04-25 | 2027-07-22 | 170 | 43d | 0d |  |
| 173 | 1.3.3.2 | Conduct on-boarding of the operators and provide necessary access to applications and facility | 5d | 2027-07-22 | 2027-07-28 | 172 | 43d | 0d |  |
| 174 | 1.3.3.3 | Train the operators on the applications, SOPs and other activities | 20d | 2027-07-28 | 2027-08-19 | 173 | 43d | 0d |  |
| 175 | 1.3.3.4 | Conduct assessment for readiness to deploy | 2d | 2027-08-19 | 2027-08-22 | 174 | 43d | 29.25d |  |
| 176 | 1.3.3.5 | Deploy the initially manpower for Transformation phase hypercare operations | 1d | 2027-09-23 | 2027-09-26 | 134, 175 | 13.75d | 13.5d |  |
| 177 | 1.3.3.6 | Progressive on-boarding of manpower during expansion and acceleration phases | 400d | 2027-10-10 | 2028-12-31 | 176 | 0.25d | 0d | finish no earlier than 2028-12-31 |
| 178 | 1.3.3.7 | Full deployment of manpower for operations of UCCC | 2282d | 2028-12-31 | 2035-12-31 | 177 | 0.25d |  |  |
| 179 | 1.3.4 | **OT 4: Continuous Improvement** | 2282d | 2028-12-31 | 2035-12-31 |  | 0.25d |  |  |
| 180 | 1.3.4.1 | Continuously monitor the performance of the operators | 2282d | 2028-12-31 | 2035-12-31 | 177 | 0.25d |  |  |
| 181 | 1.3.4.2 | Plan for improvement in the operations | 2282d | 2028-12-31 | 2035-12-31 | 177 | 0.25d |  |  |
| 182 | 1.3.4.3 | Periodically updated the documented TOM based on learnings | 2282d | 2028-12-31 | 2035-12-31 | 177 | 0.25d |  |  |
| 183 | 4 | **Building Track** | 3064d | 2026-08-09 | 2035-12-31 |  | 0.25d |  |  |
| 184 | 4.1 | **BT 1: Pre-RFP Activties** | 10d | 2026-08-09 | 2026-08-19 |  | 0.25d |  |  |
| 185 | 4.1.1 | RA to provision the layouts of the identified space for UCCC | 5d | 2026-08-09 | 2026-08-13 |  | 0.25d | 0d | start no earlier than 2026-08-09 |
| 186 | 4.1.2 | Agree on the functional spaces of UCCC | 5d | 2026-08-09 | 2026-08-13 | 185SS | 0.25d | 0d |  |
| 187 | 1.4.1.3 | Align on the overall scope to mentioned for building vendor | 2d | 2026-08-13 | 2026-08-16 | 186 | 0.25d | 0d |  |
| 188 | 1.4.1.4 | Prepare the 2D layout of the spaces agreed with RA | 5d | 2026-08-13 | 2026-08-19 | 186 | 3054.25d |  |  |

| ID | WBS | Task | Type | Duration | Start | Finish | Predecessors | Total slack | Free slack |
| --- | --- | --- | --- | --- | --- | --- | --- | --- | --- |
| 189 | 1.4.2 | **BT 2: Preparation of RFP for building vendor** |  | 26d | 2026-08-16 | 2026-09-14 |  | 0d |  |
| 190 | 1.4.2.1 | Prepare RFP for buildings vendor |  | 18d | 2026-08-16 | 2026-09-06 | 187 | 0.25d | 0d |
| 191 | 1.4.2.2 | Internal Review of RFP |  | 2d | 2026-09-06 | 2026-09-07 | 190 | 0.25d | 0d |
| 192 | 1.4.2.3 | Incorporate the feedback provided |  | 2d | 2026-09-07 | 2026-09-09 | 191 | 0.25d | 0d |
| 193 | 1.4.2.4 | Submission of the RFP to RA |  | 1d | 2026-09-09 | 2026-09-10 | 192 | 0.25d | 0d |
| 194 | 1.4.2.5 | Review and approval of the RFP by RA | manual | 3d | 2026-09-10 | 2026-09-14 | 193 |  |  |
| 195 | 1.4.3 | **BT 3: Publishing of RFP and Bid Management** |  | 91d | 2026-09-14 | 2026-12-24 |  | 0.25d |  |
| 196 | 1.4.3.1 | **Bid Submission** |  | 40d | 2026-09-14 | 2026-10-28 |  | 0.25d |  |
| 197 | 1.4.3.1.1 | Publish the RFP for building vendor |  | 1d | 2026-09-14 | 2026-09-15 | 194 | 0.25d | 0d |
| 198 | 1.4.3.1.2 | Conduct tender clarification workshop with bidders |  | 1d | 2026-09-27 | 2026-09-28 | 197FS+10d | 0.25d | 0d |
| 199 | 1.4.3.1.3 | Receive the queries from potential bidders |  | 5d | 2026-09-28 | 2026-10-04 | 198 | 0.25d | 0d |
| 200 | 1.4.3.1.4 | Prepare the responses to the clarifications sought |  | 5d | 2026-10-04 | 2026-10-08 | 199 | 0.25d | 0d |
| 201 | 1.4.3.1.5 | Review of the responses by RA |  | 3d | 2026-10-08 | 2026-10-12 | 200 | 0.25d | 0d |
| 202 | 1.4.3.1.6 | Prepare and publish the addendum, if necessary |  | 5d | 2026-10-12 | 2026-10-18 | 201 | 0.25d | 0d |
| 203 | 1.4.3.1.7 | Submission of the bids by the vendors |  | 10d | 2026-10-18 | 2026-10-28 | 202 | 0.25d | 0d |
| 204 | 1.4.3.2 | **Pre-qualification Evaluation** |  | 14d | 2026-10-28 | 2026-11-12 |  | 0.25d |  |
| 205 | 1.4.3.2.1 | Perform pre-qualification evaluation of the bids |  | 5d | 2026-10-28 | 2026-11-03 | 203 | 0.25d | 0d |
| 206 | 1.4.3.2.2 | Prepare the pre-qualification evaluation report |  | 2d | 2026-11-03 | 2026-11-05 | 205 | 0.25d | 0d |
| 207 | 1.4.3.2.3 | Review of pre-qualification evaluation report with RA |  | 2d | 2026-11-05 | 2026-11-08 | 206 | 0.25d | 0d |
| 208 | 1.4.3.2.4 | Incorporate the suggested changes by RA |  | 2d | 2026-11-08 | 2026-11-10 | 207 | 0.25d | 0d |
| 209 | 1.4.3.2.5 | Approval of pre-qualification evaluation by RA and opening of technical bids |  | 3d | 2026-11-10 | 2026-11-12 | 208 | 0.25d | 0d |
| 210 | 1.4.3.3 | **Technical Evaluation** |  | 18d | 2026-11-12 | 2026-12-03 |  | 0.25d |  |
| 211 | 1.4.3.3.1 | Perform technical evaluation of the qualified bids |  | 8d | 2026-11-12 | 2026-11-23 | 209 | 0.25d | 0d |
| 212 | 1.4.3.3.2 | Prepare the technical evaluation report |  | 3d | 2026-11-23 | 2026-11-25 | 211 | 0.25d | 0d |
| 213 | 1.4.3.3.3 | Review of technical evaluation report with RA |  | 2d | 2026-11-25 | 2026-11-29 | 212 | 0.25d | 0d |
| 214 | 1.4.3.3.4 | Incorporate the suggested changes by RA |  | 2d | 2026-11-29 | 2026-11-30 | 213 | 0.25d | 0d |
| 215 | 1.4.3.3.5 | Approval of technical evaluation by RA and opening of commercial bids |  | 3d | 2026-11-30 | 2026-12-03 | 214 | 0.25d | 0d |

| ID | WBS | Task | Duration | Start | Finish | Predecessors | Total slack | Free slack |
| --- | --- | --- | --- | --- | --- | --- | --- | --- |
| 216 | 1.4.3.4 | **Commercial Evaluation** | 12d | 2026-12-03 | 2026-12-16 |  | 0.25d |  |
| 217 | 1.4.3.4.1 | Perform commercial evaluation of the qualified bids | 3d | 2026-12-03 | 2026-12-07 | 215 | 0.25d | 0d |
| 218 | 1.4.3.4.2 | Prepare the commercial evaluation report | 2d | 2026-12-06 | 2026-12-08 | 217FS-1d | 0.25d | 0d |
| 219 | 1.4.3.4.3 | Review of commercial evaluation report with RA | 3d | 2026-12-08 | 2026-12-10 | 218 | 0.25d | 0d |
| 220 | 1.4.3.4.4 | Incorporate the suggested changes by RA | 2d | 2026-12-10 | 2026-12-14 | 219 | 0.25d | 0d |
| 221 | 1.4.3.4.5 | Approval of commercial evaluation by RA | 3d | 2026-12-14 | 2026-12-16 | 220 | 0.25d | 0d |
| 222 | 1.4.3.5 | **Vendor On-boarding** | 7d | 2026-12-16 | 2026-12-24 |  | 0.25d |  |
| 223 | 1.4.3.5.1 | Perform negotiation with the qualified bidder | 2d | 2026-12-16 | 2026-12-20 | 221 | 0.25d | 0d |
| 224 | 1.4.3.5.2 | Sign the contract with selected vendor | 5d | 2026-12-20 | 2026-12-24 | 223 | 0.25d | 0d |
| 225 | 1.4.4 | **BT 4: Development of UCCC Facility** | 277d | 2026-12-24 | 2027-11-01 |  | 0.25d |  |
| 226 | 1.4.4.1 | **Initiation Phase** | 14d | 2026-12-24 | 2027-01-10 |  | 0.25d |  |
| 227 | 1.4.4.1.1 | Preparation for project kick-off | 5d | 2026-12-24 | 2026-12-30 | 224 | 0.25d | 0d |
| 228 | 1.4.4.1.2 | Kick-off presentation with key stakeholders | 1d | 2027-01-03 | 2027-01-03 | 227FS+2d | 0.25d | 0d |
| 229 | 1.4.4.1.3 | Preparation of the detailed project plan for managed services | 3d | 2027-01-03 | 2027-01-06 | 228 | 0.25d | 0d |
| 230 | 1.4.4.1.4 | Review and approval of the detailed project plan by RA | 3d | 2027-01-06 | 2027-01-10 | 229 | 0.25d | 0d |
| 231 | 1.4.4.2 | **Assess and Design Phase** | 31d | 2027-01-10 | 2027-02-14 |  | 0.25d |  |
| 232 | 1.4.4.2.1 | Conduct site survey and validate the provisions required for UCCC | 5d | 2027-01-10 | 2027-01-14 | 230 | 0.25d | 0d |
| 233 | 1.4.4.2.2 | Prepare a detailed site survey report | 5d | 2027-01-13 | 2027-01-19 | 232FS-2d | 0.25d | 0d |
| 234 | 1.4.4.2.3 | Review of the site survey report by RA | 3d | 2027-01-19 | 2027-01-21 | 233 | 0.25d | 0d |
| 235 | 1.4.4.2.4 | Update the site survey report for the review comments | 3d | 2027-01-21 | 2027-01-25 | 234 | 0.25d | 0d |
| 236 | 1.4.4.2.5 | Approve the site survey report | 3d | 2027-01-25 | 2027-01-28 | 235 | 0.25d | 0d |
| 237 | 1.4.4.2.6 | Prepare detailed 2D and 3D layout designs based on the functional spaces | 5d | 2027-01-28 | 2027-02-03 | 236 | 0.25d | 0d |
| 238 | 1.4.4.2.7 | Review of the layout design by RA | 3d | 2027-02-03 | 2027-02-07 | 237 | 0.25d | 0d |
| 239 | 1.4.4.2.8 | Update the layout for the review comments | 3d | 2027-02-07 | 2027-02-10 | 238 | 0.25d | 0d |
| 240 | 1.4.4.2.9 | Approve the layout | 3d | 2027-02-10 | 2027-02-14 | 239 | 0.25d | 0d |

| ID | WBS | Task | Duration | Start | Finish | Predecessors | Total slack | Free slack |
| --- | --- | --- | --- | --- | --- | --- | --- | --- |
| 241 | 1.4.4.3 | **Procure Phase** | 49d | 2027-02-14 | 2027-04-08 |  | 0.25d |  |
| 242 | 1.4.4.3.1 | Prepare the final BOM based on the approved layout | 5d | 2027-02-14 | 2027-02-18 | 240 | 0.25d | 0d |
| 243 | 1.4.4.3.2 | Review and approval of the BOM for procurement | 3d | 2027-02-18 | 2027-02-22 | 242 | 0.25d | 0d |
| 244 | 1.4.4.3.3 | Place the order for procurement based on the approved BOM | 1d | 2027-02-22 | 2027-02-23 | 243 | 0.25d | 0d |
| 245 | 1.4.4.3.4 | Conduct factory visits or tests of the agreed items | 10d | 2027-02-23 | 2027-03-07 | 244 | 2876.25d |  |
| 246 | 1.4.4.3.5 | Delivery of non-IT components such as raw materials for civil and interior works, wall panels, partitions, HVAC, furniture, workstation tables and chairs, cables etc. | 30d | 2027-02-23 | 2027-03-29 | 244 | 0.25d | 0d |
| 247 | 1.4.4.3.6 | Perform inspection of the materials and provide sign-off | 10d | 2027-03-29 | 2027-04-08 | 246 | 0.25d | 0d |
| 248 | 1.4.4.4 | **Installation and Commisioning of UCCC** | 183d | 2027-04-08 | 2027-11-01 |  | 0.25d |  |
| 249 | 1.4.4.4.1 | **Installation and commissioning of priority areas** | 58d | 2027-04-08 | 2027-06-14 |  | 0.25d |  |
| 250 | 1.4.4.4.1.1 | Civil Work required as per the design approved | 10d | 2027-04-08 | 2027-04-20 | 247 | 0.25d | 0d |
| 251 | 1.4.4.4.1.2 | Installation of Cable tray/ Shafts/ Ducts as per the Electrical and IT Cable laying plan | 5d | 2027-04-20 | 2027-04-26 | 250 | 0.25d | 0d |
| 252 | 1.4.4.4.1.3 | False Flooring and False Ceiling Work Completion | 15d | 2027-04-26 | 2027-05-12 | 251 | 0.25d | 0d |
| 253 | 1.4.4.4.1.4 | Cable Laying for UCCC room | 5d | 2027-05-12 | 2027-05-18 | 252 | 0.25d | 0d |
| 254 | 1.4.4.4.1.5 | Interior works for UCCC | 5d | 2027-05-18 | 2027-05-24 | 253 | 0.25d | 0d |
| 255 | 1.4.4.4.1.6 | Electrical Panneling , Earthing and UPS Installation Work | 10d | 2027-04-20 | 2027-05-02 | 250 | 2821.25d | 0d |
| 256 | 1.4.4.4.1.7 | UPS Power On and Pannel Switchover Test | 5d | 2027-05-02 | 2027-05-06 | 255 | 2821.25d |  |
| 257 | 1.4.4.4.1.8 | Network connectivity for UCCC | 15d | 2027-04-08 | 2027-04-26 | 247 | 2831.25d |  |
| 258 | 1.4.4.4.1.9 | Installation of the furniture for the priority areas | 5d | 2027-05-24 | 2027-05-30 | 254 | 0.25d | 0d |
| 259 | 1.4.4.4.1.10 | Prepare and submit as built drawings | 5d | 2027-05-30 | 2027-06-03 | 258 | 0.25d | 0d |
| 260 | 1.4.4.4.1.11 | Inspection of the priority areas of UCCC | 5d | 2027-06-03 | 2027-06-09 | 259 | 0.25d | 0d |
| 261 | 1.4.4.4.1.12 | Approval for commissioning of priority areas | 3d | 2027-06-09 | 2027-06-14 | 260 | 0.25d | 0d |
| 262 | 1.4.4.4.2 | **Installation and commissioning of remaining areas of UCCC** | 125d | 2027-06-14 | 2027-11-01 |  | 0.25d |  |
| 263 | 1.4.4.4.2.1 | Civil Work required as per the design approved | 20d | 2027-06-14 | 2027-07-06 | 261 | 0.25d | 0d |
| 264 | 1.4.4.4.2.2 | Installation of Cable tray/ Shafts/ Ducts as per the Electrical and IT Cable laying plan | 15d | 2027-07-06 | 2027-07-22 | 263 | 0.25d | 0d |
| 265 | 1.4.4.4.2.3 | False Flooring and False Ceiling Work Completion | 15d | 2027-07-22 | 2027-08-09 | 264 | 0.25d | 0d |
| 266 | 1.4.4.4.2.4 | Cable Laying for remaining rooms | 10d | 2027-08-09 | 2027-08-19 | 265 | 0.25d | 0d |
| 267 | 1.4.4.4.2.5 | Interior works for remaining rooms | 15d | 2027-08-19 | 2027-09-06 | 266 | 0.25d | 0d |
| 268 | 1.4.4.4.2.6 | Decorative items installation for remaining rooms | 10d | 2027-09-06 | 2027-09-16 | 267 | 0.25d | 0d |
| 269 | 1.4.4.4.2.7 | Installation of the furniture | 15d | 2027-09-16 | 2027-10-04 | 268 | 0.25d | 0d |
| 270 | 1.4.4.4.2.8 | Prepare and submit as built drawings | 10d | 2027-10-04 | 2027-10-14 | 269 | 0.25d | 0d |
| 271 | 1.4.4.4.2.9 | Inspection of the remaining areas of UCCC | 10d | 2027-10-14 | 2027-10-26 | 270 | 0.25d | 0d |
| 272 | 1.4.4.4.2.10 | Approval for commissioning of the remaining areas | 5d | 2027-10-26 | 2027-11-01 | 271 | 0.25d | 0d |

| ID | WBS | Task | Type | Duration | Start | Finish | Predecessors | Total slack | Free slack | Constraint |
| --- | --- | --- | --- | --- | --- | --- | --- | --- | --- | --- |
| 273 | 1.4.5 | **BT 5: Operation and Maintenance of UCCC facility** |  | 2663d | 2027-11-01 | 2035-12-31 |  | 0.25d |  |  |
| 274 | 1.4.5.1 | Preparation of the operations and maintenance activities and schedule |  | 10d | 2027-11-01 | 2027-11-11 | 272 | 2650.25d | 0d |  |
| 275 | 1.4.5.2 | Review and approval of the operations and maintenance schedule by RA |  | 3d | 2027-11-11 | 2027-11-15 | 274 | 2650.25d |  |  |
| 276 | 1.4.5.3 | Provide operations and maintenance services for UCCC facility |  | 2663d | 2027-11-01 | 2035-12-31 | 272 | 0.25d |  |  |
| 277 | 5 | **RM Systems Rollout Track** |  | 803d? | 2026-08-16 | 2029-01-30 |  | 0d |  |  |
| 278 | 5.1 | **RMSR 1: CCTV RFP** |  | 803d | 2026-08-16 | 2029-01-30 |  | 0d |  |  |
| 279 | 5.1.1 | **Preparation of RFP for CCTV vendor** |  | 28d | 2026-08-16 | 2026-09-15 |  | 0d |  |  |
| 280 | 1.5.1.1.1 | Prepare RFP for CCTV vendor |  | 15d | 2026-08-16 | 2026-09-01 |  | 0d |  | must start on 2026-08-16 |
| 281 | 1.5.1.1.2 | Internal review of RFP |  | 2d | 2026-09-01 | 2026-09-02 | 280 | 2255d | 0d |  |
| 282 | 1.5.1.1.3 | Submit the RFP to RA | milestone | 1d | 2026-09-02 | 2026-09-03 | 281 | 2255d | 0d |  |
| 283 | 1.5.1.1.4 | Approval of RFP by RA |  | 10d | 2026-09-03 | 2026-09-15 | 282 | 2255d | 0d |  |
| 284 | 1.5.1.2 | **Publishing of RFP and Bid Management** |  | 104d | 2026-09-15 | 2027-01-10 |  | 2255d |  |  |
| 285 | 1.5.1.2.1 | **Bid Submission** |  | 40d | 2026-09-15 | 2026-10-29 |  | 2255d |  |  |
| 286 | 1.5.1.2.1.1 | Publish the RFP for building vendor |  | 1d | 2026-09-15 | 2026-09-16 | 283 | 2255d | 0d |  |
| 287 | 1.5.1.2.1.2 | Conduct tender clarification workshop with bidders |  | 1d | 2026-09-28 | 2026-09-29 | 286FS+10d | 2255d | 0d |  |
| 288 | 1.5.1.2.1.3 | Receive the queries from potential bidders |  | 5d | 2026-09-29 | 2026-10-05 | 287 | 2255d | 0d |  |
| 289 | 1.5.1.2.1.4 | Prepare the responses to the clarifications sought |  | 5d | 2026-10-05 | 2026-10-11 | 288 | 2255d | 0d |  |
| 290 | 1.5.1.2.1.5 | Review of the responses by RA |  | 3d | 2026-10-11 | 2026-10-13 | 289 | 2255d | 0d |  |
| 291 | 1.5.1.2.1.6 | Prepare and publish the addendum, if necessary |  | 5d | 2026-10-13 | 2026-10-19 | 290 | 2255d | 0d |  |
| 292 | 1.5.1.2.1.7 | Submission of the bids by the vendors |  | 10d | 2026-10-19 | 2026-10-29 | 291 | 2255d | 0d |  |
| 293 | 1.5.1.2.2 | **Pre-qualification Evaluation** |  | 18d | 2026-10-29 | 2026-11-19 |  | 2255d |  |  |
| 294 | 1.5.1.2.2.1 | Perform pre-qualification evaluation of the bids |  | 8d | 2026-10-29 | 2026-11-09 | 292 | 2255d | 0d |  |
| 295 | 1.5.1.2.2.2 | Prepare the pre-qualification evaluation report |  | 3d | 2026-11-05 | 2026-11-09 | 294FS-2d | 2255d | 0d |  |
| 296 | 1.5.1.2.2.3 | Review of pre-qualification evaluation report with RA |  | 3d | 2026-11-09 | 2026-11-12 | 295 | 2255d | 0d |  |
| 297 | 1.5.1.2.2.4 | Incorporate the suggested changes by RA |  | 3d | 2026-11-12 | 2026-11-16 | 296 | 2255d | 0d |  |
| 298 | 1.5.1.2.2.5 | Approval of pre-qualification evaluation by RA and opening of technical bids |  | 3d | 2026-11-16 | 2026-11-19 | 297 | 2255d | 0d |  |

| ID | WBS | Task | Duration | Start | Finish | Predecessors | Total slack | Free slack |
| --- | --- | --- | --- | --- | --- | --- | --- | --- |
| 299 | 1.5.1.2.3 | **Technical Evaluation** | 20d | 2026-11-19 | 2026-12-13 |  | 2255d |  |
| 300 | 1.5.1.2.3.1 | Perform technical evaluation of the qualified bids | 10d | 2026-11-19 | 2026-12-01 | 298 | 2255d | 0d |
| 301 | 1.5.1.2.3.2 | Prepare the technical evaluation report | 5d | 2026-11-29 | 2026-12-03 | 300FS-2d | 2255d | 0d |
| 302 | 1.5.1.2.3.3 | Review of technical evaluation report with RA | 3d | 2026-12-03 | 2026-12-07 | 301 | 2255d | 0d |
| 303 | 1.5.1.2.3.4 | Incorporate the suggested changes by RA | 3d | 2026-12-07 | 2026-12-10 | 302 | 2255d | 0d |
| 304 | 1.5.1.2.3.5 | Approval of technical evaluation by RA and opening of commercial bids | 1d | 2026-12-10 | 2026-12-13 | 303 | 2255d | 0d |
| 305 | 1.5.1.2.4 | **Commercial Evaluation** | 13d | 2026-12-13 | 2026-12-27 |  | 2255d |  |
| 306 | 1.5.1.2.4.1 | Perform commercial evaluation of the qualified bids | 3d | 2026-12-13 | 2026-12-15 | 304 | 2255d | 0d |
| 307 | 1.5.1.2.4.2 | Prepare the commercial evaluation report | 2d | 2026-12-15 | 2026-12-17 | 306 | 2255d | 0d |
| 308 | 1.5.1.2.4.3 | Review of commercial evaluation report with RA | 3d | 2026-12-17 | 2026-12-21 | 307 | 2255d | 0d |
| 309 | 1.5.1.2.4.4 | Incorporate the suggested changes by RA | 3d | 2026-12-21 | 2026-12-23 | 308 | 2255d | 0d |
| 310 | 1.5.1.2.4.5 | Approval of commercial evaluation by RA | 2d | 2026-12-23 | 2026-12-27 | 309 | 2255d | 0d |
| 311 | 1.5.1.2.5 | **Vendor On-boarding** | 13d | 2026-12-27 | 2027-01-10 |  | 2255d |  |
| 312 | 1.5.1.2.5.1 | Perform negotiation with the qualified bidder | 3d | 2026-12-27 | 2026-12-29 | 310 | 2255d | 0d |
| 313 | 1.5.1.2.5.2 | Sign the contract with selected vendor | 10d | 2026-12-29 | 2027-01-10 | 312 | 2255d | 0d |
| 314 | 1.5.1.3 | **Implementation of CCTV Scope** | 181d | 2027-01-10 | 2027-08-01 |  | 2255d |  |
| 315 | 1.5.1.3.1 | **Initiation Phase** | 19d | 2027-01-10 | 2027-02-01 |  | 2255d |  |
| 316 | 1.5.1.3.1.1 | Preparation for project kick-off | 10d | 2027-01-10 | 2027-01-20 | 313 | 2255d | 0d |
| 317 | 1.5.1.3.1.2 | Kick-off presentation with key stakeholders | 1d | 2027-01-20 | 2027-01-21 | 316 | 2255d | 0d |
| 318 | 1.5.1.3.1.3 | Preparation of the detailed project plan for managed services | 5d | 2027-01-21 | 2027-01-27 | 317 | 2897d | 0d |
| 319 | 1.5.1.3.1.4 | Review and approval of the detailed project plan by RA | 3d | 2027-01-27 | 2027-02-01 | 318 | 2897d | 0d |
| 320 | 1.5.1.3.2 | **Assess Phase** | 41d | 2027-01-21 | 2027-03-09 |  | 2255d |  |
| 321 | 1.5.1.3.2.1 | Conduct site survey of the 52 locations | 25d | 2027-01-21 | 2027-02-18 | 317 | 2255d | 0d |
| 322 | 1.5.1.3.2.2 | Assess the monitoring center and related applications, network and hosting infrastructure | 10d | 2027-02-01 | 2027-02-11 | 319 | 2897d |  |
| 323 | 1.5.1.3.2.3 | Prepare a detailed site survey and baseline assessment report | 10d | 2027-02-14 | 2027-02-24 | 321FS-5d | 2255d | 0d |
| 324 | 1.5.1.3.2.4 | Review of the assessment report by RA | 5d | 2027-02-24 | 2027-03-02 | 323 | 2255d | 0d |
| 325 | 1.5.1.3.2.5 | Incorporate the feedback provided by RA | 3d | 2027-03-02 | 2027-03-07 | 324 | 2255d | 0d |
| 326 | 1.5.1.3.2.6 | Approval of the baseline assessment report by RA | 3d | 2027-03-07 | 2027-03-09 | 325 | 2255d | 0d |

| ID | WBS | Task | Duration | Start | Finish | Predecessors | Total slack | Free slack |
| --- | --- | --- | --- | --- | --- | --- | --- | --- |
| 327 | 1.5.1.3.3 | **Design Phase** | 26d | 2027-03-09 | 2027-04-07 |  | 2255d |  |
| 328 | 1.5.1.3.3.1 | Prepare a detailed design report | 15d | 2027-03-09 | 2027-03-25 | 326 | 2255d | 0d |
| 329 | 1.5.1.3.3.2 | Review of the design report by RA | 5d | 2027-03-25 | 2027-03-31 | 328 | 2255d | 0d |
| 330 | 1.5.1.3.3.3 | Incorporate the feedback from RA | 3d | 2027-03-31 | 2027-04-04 | 329 | 2255d | 0d |
| 331 | 1.5.1.3.3.4 | Approval of the design report by RA | 3d | 2027-04-04 | 2027-04-07 | 330 | 2255d | 0d |
| 332 | 1.5.1.3.4 | **Procure Phase** | 37d | 2027-04-07 | 2027-05-18 |  | 2255d |  |
| 333 | 1.5.1.3.4.1 | Finalize the BOM as per the approved design and assessment report | 5d | 2027-04-07 | 2027-04-13 | 331 | 2255d | 0d |
| 334 | 1.5.1.3.4.2 | Review of the BOM by RA | 3d | 2027-04-13 | 2027-04-15 | 333 | 2255d | 0d |
| 335 | 1.5.1.3.4.3 | Incorporate the feedback from RA | 2d | 2027-04-15 | 2027-04-19 | 334 | 2255d | 0d |
| 336 | 1.5.1.3.4.4 | Approval of the BOM by RA | 3d | 2027-04-19 | 2027-04-21 | 335 | 2255d | 0d |
| 337 | 1.5.1.3.4.5 | Place the order for approved BOM | 1d | 2027-04-21 | 2027-04-22 | 336 | 2255d | 0d |
| 338 | 1.5.1.3.4.6 | Deliver the materials to the site | 15d | 2027-04-22 | 2027-05-10 | 337 | 2255d | 0d |
| 339 | 1.5.1.3.4.7 | Inspect the materials for the agreed quantity and make and model | 5d | 2027-05-10 | 2027-05-16 | 338 | 2255d | 0d |
| 340 | 1.5.1.3.4.8 | Approval of the delivered materials for installation | 3d | 2027-05-16 | 2027-05-18 | 339 | 2255d | 0d |
| 341 | 1.5.1.3.5 | **Implementation Phase** | 66d | 2027-05-18 | 2027-08-01 |  | 2255d |  |
| 342 | 1.5.1.3.5.1 | **Installation and Configuration** | 40d | 2027-05-18 | 2027-07-01 |  | 2255d |  |
| 343 | 1.5.1.3.5.1.1 | Installation of the field components across th 52 sites | 30d | 2027-05-18 | 2027-06-21 | 340 | 2771d | 0d |
| 344 | 1.5.1.3.5.1.2 | Provisioning of network connectivity for field components | 10d | 2027-06-21 | 2027-07-01 | 343 | 2771d |  |
| 345 | 1.5.1.3.5.1.3 | Installation of the hosting infrastructure | 15d | 2027-05-18 | 2027-06-03 | 340 | 2255d | 0d |
| 346 | 1.5.1.3.5.1.4 | Provisioning of connectivity to DC site | 10d | 2027-05-18 | 2027-05-30 | 340 | 2260d | 5d |
| 347 | 1.5.1.3.5.1.5 | Installation of the VMS and other software | 5d | 2027-06-03 | 2027-06-09 | 346, 345 | 2255d | 0d |
| 348 | 1.5.1.3.5.1.6 | Configuration of the software and field devices | 10d | 2027-06-09 | 2027-06-21 | 347 | 2260d | 0d |
| 349 | 1.5.1.3.5.1.7 | Perform integrations with the other software | 15d | 2027-06-09 | 2027-06-27 | 347 | 2255d | 0d |
| 350 | 1.5.1.3.5.2 | **Testing and Commissioning** | 25d | 2027-06-21 | 2027-07-19 |  | 2260d |  |
| 351 | 1.5.1.3.5.2.1 | Prepare test plan and test cases | 5d | 2027-06-27 | 2027-07-01 | 349 | 2771d |  |
| 352 | 1.5.1.3.5.2.2 | Test the configuration of the each of the cameras | 5d | 2027-06-21 | 2027-06-27 | 348 | 2260d | 5d |
| 353 | 1.5.1.3.5.2.3 | Perform integration testing | 5d | 2027-06-27 | 2027-07-01 | 349 | 2255d | 0d |
| 354 | 1.5.1.3.5.2.4 | Rectify the bugs identified during testing | 5d | 2027-07-01 | 2027-07-07 | 352, 353 | 2255d | 0d |
| 355 | 1.5.1.3.5.2.5 | Conduct UAT along with idenitified stakeholders | 2d | 2027-07-07 | 2027-07-11 | 354 | 2255d | 0d |
| 356 | 1.5.1.3.5.2.6 | Prepare the UAT report | 5d | 2027-07-11 | 2027-07-15 | 355 | 2255d | 0d |
| 357 | 1.5.1.3.5.2.7 | Approval of the UAT report by RA | 3d | 2027-07-15 | 2027-07-19 | 356 | 2255d | 0d |

| ID | WBS | Task | Duration | Start | Finish | Predecessors | Total slack | Free slack | Constraint |
| --- | --- | --- | --- | --- | --- | --- | --- | --- | --- |
| 358 | 1.5.1.3.5.3 | **Training and Go-Live** | 11d | 2027-07-19 | 2027-08-01 |  | 2255d |  |  |
| 359 | 1.5.1.3.5.3.1 | Conduct training to the identified personnel | 5d | 2027-07-19 | 2027-07-25 | 357 | 2255d | 0d |  |
| 360 | 1.5.1.3.5.3.2 | Submit the required manuals and training materials | 5d | 2027-07-25 | 2027-07-29 | 359 | 2255d | 0d |  |
| 361 | 1.5.1.3.5.3.3 | Go-Live for the CCTV operations | 1d | 2027-07-29 | 2027-08-01 | 360 | 2255d | 0d |  |
| 362 | 1.5.1.4 | **Operations and Maintenance** | 490d | 2027-08-01 | 2029-01-30 |  | 2255d |  |  |
| 363 | 1.5.1.4.1 | Operations and maintenance of the CCTV infrastructure | 490d | 2027-08-01 | 2029-01-30 | 361 | 2255d |  |  |
| 364 | 1.5.2 | **RMSR 2: ESOS RFP** | 66d? | 2026-08-30 | 2026-11-11 |  | 0d |  |  |
| 365 | 5.1.1 | **Preparation of RFP for ESOS vendor** | 4d? | 2026-08-30 | 2026-09-02 |  | 0d |  |  |
| 366 | 1.5.2.1.1 | Prepare RFP for ESOS vendor | 1d? | 2026-08-30 | 2026-08-31 |  | 0d |  | must start on 2026-08-30 |
| 367 | 1.5.2.1.2 | Review of RFP by RA | 1d? | 2026-08-31 | 2026-08-31 | 366 | 2979.5d | 0d |  |
| 368 | 1.5.2.1.3 | Incorporate the feedback provided by RA | 1d? | 2026-08-31 | 2026-09-01 | 367 | 2979.5d | 0d |  |
| 369 | 1.5.2.1.4 | Approval of RFP by RA | 1d? | 2026-09-01 | 2026-09-02 | 368 | 2979.5d | 0d |  |
| 370 | 1.5.2.2 | **Publishing of RFP and Bid Management** | 23d? | 2026-09-02 | 2026-09-28 |  | 2979.5d |  |  |
| 371 | 1.5.2.2.1 | **Bid Submission** | 7d? | 2026-09-02 | 2026-09-10 |  | 2979.5d |  |  |
| 372 | 1.5.2.2.1.1 | Publish the RFP for building vendor | 1d? | 2026-09-02 | 2026-09-03 | 369 | 2979.5d | 0d |  |
| 373 | 1.5.2.2.1.2 | Conduct tender clarification workshop with bidders | 1d? | 2026-09-03 | 2026-09-06 | 372 | 2979.5d | 0d |  |
| 374 | 1.5.2.2.1.3 | Receive the queries from potential bidders | 1d? | 2026-09-06 | 2026-09-06 | 373 | 2979.5d | 0d |  |
| 375 | 1.5.2.2.1.4 | Prepare the responses to the clarifications sought | 1d? | 2026-09-06 | 2026-09-07 | 374 | 2979.5d | 0d |  |
| 376 | 1.5.2.2.1.5 | Review of the responses by RA | 1d? | 2026-09-07 | 2026-09-08 | 375 | 2979.5d | 0d |  |
| 377 | 1.5.2.2.1.6 | Prepare and publish the addendum, if necessary | 1d? | 2026-09-08 | 2026-09-09 | 376 | 2979.5d | 0d |  |
| 378 | 1.5.2.2.1.7 | Submission of the bids by the vendors | 1d? | 2026-09-09 | 2026-09-10 | 377 | 2979.5d | 0d |  |
| 379 | 1.5.2.2.2 | **Pre-qualification Evaluation** | 5d? | 2026-09-10 | 2026-09-16 |  | 2979.5d |  |  |
| 380 | 1.5.2.2.2.1 | Perform pre-qualification evaluation of the bids | 1d? | 2026-09-10 | 2026-09-10 | 378 | 2979.5d | 0d |  |
| 381 | 1.5.2.2.2.2 | Prepare the pre-qualification evaluation report | 1d? | 2026-09-10 | 2026-09-13 | 380 | 2979.5d | 0d |  |
| 382 | 1.5.2.2.2.3 | Review of pre-qualification evaluation report with RA | 1d? | 2026-09-13 | 2026-09-14 | 381 | 2979.5d | 0d |  |
| 383 | 1.5.2.2.2.4 | Incorporate the suggested changes by RA | 1d? | 2026-09-14 | 2026-09-15 | 382 | 2979.5d | 0d |  |
| 384 | 1.5.2.2.2.5 | Approval of pre-qualification evaluation by RA and opening of technical bids | 1d? | 2026-09-15 | 2026-09-16 | 383 | 2979.5d | 0d |  |

| ID | WBS | Task | Duration | Start | Finish | Predecessors | Total slack | Free slack |
| --- | --- | --- | --- | --- | --- | --- | --- | --- |
| 385 | 1.5.2.2.3 | **Technical Evaluation** | 4d? | 2026-09-16 | 2026-09-21 |  | 2979.5d |  |
| 386 | 1.5.2.2.3.1 | Perform technical evaluation of the qualified bids | 1d? | 2026-09-16 | 2026-09-16 | 384 | 3028.5d |  |
| 387 | 1.5.2.2.3.2 | Prepare the technical evaluation report | 1d? | 2026-09-16 | 2026-09-16 | 384 | 2979.5d | 0d |
| 388 | 1.5.2.2.3.3 | Review of technical evaluation report with RA | 1d? | 2026-09-16 | 2026-09-17 | 387 | 2979.5d | 0d |
| 389 | 1.5.2.2.3.4 | Incorporate the suggested changes by RA | 1d? | 2026-09-17 | 2026-09-20 | 388 | 2979.5d | 0d |
| 390 | 1.5.2.2.3.5 | Approval of technical evaluation by RA and opening of commercial bids | 1d? | 2026-09-20 | 2026-09-21 | 389 | 2979.5d | 0d |
| 391 | 1.5.2.2.4 | **Commercial Evaluation** | 5d? | 2026-09-21 | 2026-09-27 |  | 2979.5d |  |
| 392 | 1.5.2.2.4.1 | Perform commercial evaluation of the qualified bids | 1d? | 2026-09-21 | 2026-09-22 | 390 | 2979.5d | 0d |
| 393 | 1.5.2.2.4.2 | Prepare the commercial evaluation report | 1d? | 2026-09-22 | 2026-09-22 | 392 | 2979.5d | 0d |
| 394 | 1.5.2.2.4.3 | Review of commercial evaluation report with RA | 1d? | 2026-09-22 | 2026-09-23 | 393 | 2979.5d | 0d |
| 395 | 1.5.2.2.4.4 | Incorporate the suggested changes by RA | 1d? | 2026-09-23 | 2026-09-24 | 394 | 2979.5d | 0d |
| 396 | 1.5.2.2.4.5 | Approval of commercial evaluation by RA | 1d? | 2026-09-24 | 2026-09-27 | 395 | 2979.5d | 0d |
| 397 | 1.5.2.2.5 | **Vendor On-boarding** | 2d? | 2026-09-27 | 2026-09-28 |  | 2979.5d |  |
| 398 | 1.5.2.2.5.1 | Perform negotiation with the qualified bidder | 1d? | 2026-09-27 | 2026-09-28 | 396 | 2979.5d | 0d |
| 399 | 1.5.2.2.5.2 | Sign the contract with selected vendor | 1d? | 2026-09-28 | 2026-09-28 | 398 | 2979.5d | 0d |
| 400 | 1.5.2.3 | **Implementation of ESOS Scope** | 38d? | 2026-09-28 | 2026-11-10 |  | 2979.5d |  |
| 401 | 1.5.2.3.1 | **Initiation Phase** | 4d? | 2026-09-28 | 2026-10-04 |  | 2979.5d |  |
| 402 | 1.5.2.3.1.1 | Preparation for project kick-off | 1d? | 2026-09-28 | 2026-09-29 | 399 | 2979.5d | 0d |
| 403 | 1.5.2.3.1.2 | Kick-off presentation with key stakeholders | 1d? | 2026-09-29 | 2026-09-30 | 402 | 2979.5d | 0d |
| 404 | 1.5.2.3.1.3 | Preparation of the detailed project plan for managed services | 1d? | 2026-09-30 | 2026-10-01 | 403 | 2979.5d | 0d |
| 405 | 1.5.2.3.1.4 | Review and approval of the detailed project plan by RA | 1d? | 2026-10-01 | 2026-10-04 | 404 | 2979.5d | 0d |
| 406 | 1.5.2.3.2 | **Assess Phase** | 6d? | 2026-10-04 | 2026-10-08 |  | 2979.5d |  |
| 407 | 1.5.2.3.2.1 | Conduct assessment of all the IoT devices available for the current vehicles | 1d? | 2026-10-04 | 2026-10-04 | 405 | 2979.5d | 0d |
| 408 | 1.5.2.3.2.2 | Assess the monitoring center and related applications, network and hosting infrastructure | 1d? | 2026-10-04 | 2026-10-05 | 407 | 2979.5d | 0d |
| 409 | 1.5.2.3.2.3 | Prepare the assessment report | 1d? | 2026-10-05 | 2026-10-06 | 408 | 2979.5d | 0d |
| 410 | 1.5.2.3.2.4 | Review of the assessment report by RA | 1d? | 2026-10-06 | 2026-10-07 | 409 | 2979.5d | 0d |
| 411 | 1.5.2.3.2.5 | Incorporate the feedback provided by RA | 1d? | 2026-10-07 | 2026-10-08 | 410 | 2979.5d | 0d |
| 412 | 1.5.2.3.2.6 | Approval of the assessment report by RA | 1d? | 2026-10-08 | 2026-10-08 | 411 | 2979.5d | 0d |

| ID | WBS | Task | Duration | Start | Finish | Predecessors | Total slack | Free slack |
| --- | --- | --- | --- | --- | --- | --- | --- | --- |
| 413 | 1.5.2.3.3 | **Design Phase** | 4d? | 2026-10-08 | 2026-10-14 |  | 2979.5d |  |
| 414 | 1.5.2.3.3.1 | Prepare a detailed technical design report | 1d? | 2026-10-08 | 2026-10-11 | 412 | 2979.5d | 0d |
| 415 | 1.5.2.3.3.2 | Review of the design report by RA | 1d? | 2026-10-11 | 2026-10-12 | 414 | 2979.5d | 0d |
| 416 | 1.5.2.3.3.3 | Incorporate the feedback from RA | 1d? | 2026-10-12 | 2026-10-13 | 415 | 2979.5d | 0d |
| 417 | 1.5.2.3.3.4 | Approval of the design report by RA | 1d? | 2026-10-13 | 2026-10-14 | 416 | 2979.5d | 0d |
| 418 | 1.5.2.3.4 | **Procure Phase** | 8d? | 2026-10-14 | 2026-10-22 |  | 2979.5d |  |
| 419 | 1.5.2.3.4.1 | Finalize the BOM as per the approved design and assessment report | 1d? | 2026-10-14 | 2026-10-14 | 417 | 2979.5d | 0d |
| 420 | 1.5.2.3.4.2 | Review of the BOM by RA | 1d? | 2026-10-14 | 2026-10-15 | 419 | 2979.5d | 0d |
| 421 | 1.5.2.3.4.3 | Incorporate the feedback from RA | 1d? | 2026-10-15 | 2026-10-18 | 420 | 2979.5d | 0d |
| 422 | 1.5.2.3.4.4 | Approval of the BOM by RA | 1d? | 2026-10-18 | 2026-10-19 | 421 | 2979.5d | 0d |
| 423 | 1.5.2.3.4.5 | Place the order for approved BOM | 1d? | 2026-10-19 | 2026-10-20 | 422 | 2979.5d | 0d |
| 424 | 1.5.2.3.4.6 | Deliver the materials to the site | 1d? | 2026-10-20 | 2026-10-20 | 423 | 2979.5d | 0d |
| 425 | 1.5.2.3.4.7 | Inspect the materials for the agreed quantity and make and model | 1d? | 2026-10-20 | 2026-10-21 | 424 | 2979.5d | 0d |
| 426 | 1.5.2.3.4.8 | Approval of the delivered materials for installation | 1d? | 2026-10-21 | 2026-10-22 | 425 | 2979.5d | 0d |
| 427 | 1.5.2.3.5 | **Implementation Phase** | 16d? | 2026-10-22 | 2026-11-10 |  | 2979.5d |  |
| 428 | 1.5.2.3.5.1 | **Installation and Configuration** | 6d? | 2026-10-22 | 2026-10-29 |  | 2979.5d |  |
| 429 | 1.5.2.3.5.1.1 | Installation of the IoTs for the remaining vehicles | 1d? | 2026-10-22 | 2026-10-25 | 426 | 2979.5d | 0d |
| 430 | 1.5.2.3.5.1.2 | Installation of the hosting infrastructure | 1d? | 2026-10-25 | 2026-10-26 | 429 | 2979.5d | 0d |
| 431 | 1.5.2.3.5.1.3 | Provisioning of connectivity to DC site | 1d? | 2026-10-26 | 2026-10-26 | 430 | 2979.5d | 0d |
| 432 | 1.5.2.3.5.1.4 | Installation of the fleet management software | 1d? | 2026-10-26 | 2026-10-27 | 431 | 2979.5d | 0d |
| 433 | 1.5.2.3.5.1.5 | Configuration of the software and field devices | 1d? | 2026-10-27 | 2026-10-28 | 432 | 2979.5d | 0d |
| 434 | 1.5.2.3.5.1.6 | Perform integrations with UCCC and other software | 1d? | 2026-10-28 | 2026-10-29 | 433 | 2979.5d | 0d |
| 435 | 1.5.2.3.5.2 | **Testing and Commissioning** | 7d? | 2026-10-29 | 2026-11-05 |  | 2979.5d |  |
| 436 | 1.5.2.3.5.2.1 | Prepare test plan and test cases | 1d? | 2026-10-29 | 2026-11-01 | 434 | 2979.5d | 0d |
| 437 | 1.5.2.3.5.2.2 | Test the configuration of the each of the cameras | 1d? | 2026-11-01 | 2026-11-01 | 436 | 2979.5d | 0d |
| 438 | 1.5.2.3.5.2.3 | Perform integration testing | 1d? | 2026-11-01 | 2026-11-02 | 437 | 2979.5d | 0d |
| 439 | 1.5.2.3.5.2.4 | Rectify the bugs identified during testing | 1d? | 2026-11-02 | 2026-11-03 | 438 | 2979.5d | 0d |
| 440 | 1.5.2.3.5.2.5 | Conduct UAT along with idenitified stakeholders | 1d? | 2026-11-03 | 2026-11-04 | 439 | 2979.5d | 0d |
| 441 | 1.5.2.3.5.2.6 | Prepare the UAT report | 1d? | 2026-11-04 | 2026-11-05 | 440 | 2979.5d | 0d |
| 442 | 1.5.2.3.5.2.7 | Approval of the UAT report by RA | 1d? | 2026-11-05 | 2026-11-05 | 441 | 2979.5d | 0d |

| ID | WBS | Task | Duration | Start | Finish | Predecessors | Total slack | Free slack |
| --- | --- | --- | --- | --- | --- | --- | --- | --- |
| 443 | 1.5.2.3.5.3 | **Training and Go-Live** | 3d? | 2026-11-05 | 2026-11-10 |  | 2979.5d |  |
| 444 | 1.5.2.3.5.3.1 | Conduct training to the identified personnel | 1d? | 2026-11-05 | 2026-11-08 | 442 | 2979.5d | 0d |
| 445 | 1.5.2.3.5.3.2 | Submit the required manuals and training materials | 1d? | 2026-11-08 | 2026-11-09 | 444 | 2979.5d | 0d |
| 446 | 1.5.2.3.5.3.3 | Go-Live for the fleet management operations | 1d? | 2026-11-09 | 2026-11-10 | 445 | 2979.5d | 0d |
| 447 | 1.5.2.4 | **Operations and Maintenance** | 1d? | 2026-11-10 | 2026-11-11 |  | 2979.5d |  |
| 448 | 1.5.2.4.1 | Operations and maintenance of the fleet management software and related infrastructure | 1d? | 2026-11-10 | 2026-11-11 | 446 | 2979.5d |  |
